# Simple Project Plan

Schedule from MS Project, 2017-09-21 to 2018-01-11, A marks actual dates.

## Calendars

- Standard: Mon-Fri 08:00-12:00, 13:00-17:00; Sat-Sun off. Exceptions (off unless hours are given): 2017-09-14 to 2017-12-31 (非工作时间, recurring).

## Resources

| Resource |
| --- |
| 何晓麦 |
| 刘子凡 |
| 梁肖剑 |
| 袁强 |

## Schedule

| ID | WBS | Task | Type | Duration | Start | Finish | Predecessors | Complete | Remaining | Total slack | Resources | Work | Actual work |
| --- | --- | --- | --- | --- | --- | --- | --- | --- | --- | --- | --- | --- | --- |
| 1 | 1 | **网上图书管理系统计划** |  | 39d | 2017-09-21 A | 2018-01-11 |  | 48% | 20.31d | 0d | 何晓麦; 梁肖剑; 刘子凡; 袁强 | 3996.61h | 1250.85h |
| 2 | 1.1 | **预启动** |  | 2d | 2017-09-21 A | 2017-09-22 A |  | 100% |  |  | 何晓麦 | 56h | 56h |
| 3 | 1.1.1 | 项目目标 |  | 1d | 2017-09-21 A | 2017-09-21 A |  | 100% |  |  | 何晓麦 | 8h | 8h |
| 4 | 1.1.2 | 项目可行性分析 |  | 1d | 2017-09-22 A | 2017-09-22 A | 3 | 100% |  |  | 何晓麦; 梁肖剑; 刘子凡; 袁强 | 32h | 32h |
| 5 | 1.2 | **启动** |  | 2d | 2017-09-28 A | 2017-09-29 A | 4 | 100% |  |  | 何晓麦 | 32h | 32h |
| 6 | 1.2.1 | 项目章程 |  | 1d | 2017-09-28 A | 2017-09-28 A | 4 | 100% |  |  | 何晓麦 | 8h | 8h |
| 7 | 1.2.2 | 确定项目成员、人员分工 |  | 1d | 2017-09-29 A | 2017-09-29 A | 6 | 100% |  |  | 何晓麦 | 8h | 8h |
| 8 | 1.2.3 | 统一项目管理方式 |  | 1d | 2017-09-29 A | 2017-09-29 A | 6 | 100% |  |  | 何晓麦 | 8h | 8h |
| 9 | 1.3 | **计划** |  | 4d | 2017-10-05 A | 2017-10-13 A | 8 | 100% |  |  | 何晓麦; 梁肖剑; 刘子凡; 袁强 | 264h | 264h |
| 10 | 1.3.1 | 项目开题报告 |  | 1d | 2017-10-05 A | 2017-10-05 A | 7 | 100% |  |  | 何晓麦 | 8h | 8h |
| 11 | 1.3.2 | 文档版本控制决策 |  | 0.5d | 2017-10-06 A | 2017-10-06 A | 10 | 100% |  |  | 何晓麦 | 4h | 4h |
| 12 | 1.3.3 | 团队成员统一开发时间 |  | 0.5d | 2017-10-06 A | 2017-10-06 A | 11 | 100% |  |  | 何晓麦 | 4h | 4h |
| 13 | 1.3.4 | 项目沟通方式决策 |  | 0.5d | 2017-10-12 A | 2017-10-12 A | 12 | 100% |  |  | 何晓麦 | 4h | 4h |
| 14 | 1.3.5 | 工具Tower建立团队、项目 |  | 0.5d | 2017-10-12 A | 2017-10-12 A | 13 | 100% |  |  | 何晓麦 | 4h | 4h |
| 15 | 1.3.6 | **项目关键技术决定** |  | 0d | 2017-10-10 A | 2017-10-10 A | 14 | 100% |  |  | 何晓麦; 梁肖剑; 刘子凡; 袁强 |  |  |
| 16 | 1.3.6.1 | 项目开发模型 | milestone | 0d | 2017-10-10 A | 2017-10-10 A |  | 100% |  |  | 何晓麦 |  |  |
| 17 | 1.3.6.2 | 数据库 | milestone | 0d | 2017-10-10 A | 2017-10-10 A |  | 100% |  |  | 刘子凡; 袁强 |  |  |
| 18 | 1.3.6.3 | 整体框架 | milestone | 0d | 2017-10-10 A | 2017-10-10 A |  | 100% |  |  | 梁肖剑 |  |  |
| 19 | 1.3.7 | 项目范围确定 |  | 1d | 2017-10-13 A | 2017-10-13 A | 18 | 100% |  |  | 何晓麦; 袁强 | 16h | 16h |
| 20 | 1.4 | **执行** |  | 32d | 2017-10-12 A | 2018-01-10 | 19 | 46% | 17.42d | 1d | 何晓麦; 梁肖剑; 刘子凡; 袁强 | 1532.61h | 572.61h |
| 21 | 1.4.1 | **项目需求分析** |  | 2d | 2017-10-12 A | 2017-10-17 A | 19 | 100% |  |  | 何晓麦; 梁肖剑; 刘子凡; 袁强 | 108h | 108h |
| 22 | 1.4.1.1 | 系统功能结构讨论 |  | 0.5d | 2017-10-12 A | 2017-10-12 A | 19 | 100% |  |  | 何晓麦; 梁肖剑; 刘子凡; 袁强 | 16h | 16h |
| 23 | 1.4.1.2 | 各子模块用例描述 |  | 1d | 2017-10-13 A | 2017-10-13 A | 22 | 100% |  |  | 梁肖剑; 刘子凡; 袁强 | 24h | 24h |
| 24 | 1.4.1.3 | 概要介绍、系统非功能性需求及术语表 |  | 0.5d | 2017-10-13 A | 2017-10-13 A | 23 | 100% |  |  | 何晓麦 | 4h | 4h |
| 25 | 1.4.1.4 | 需求文档审核 | milestone | 0d | 2017-10-17 A | 2017-10-17 A | 24 | 100% |  |  | 何晓麦 |  |  |

| ID | WBS | Task | Type | Duration | Start | Finish | Predecessors | Complete | Constraint | Resources | Work | Actual work |
| --- | --- | --- | --- | --- | --- | --- | --- | --- | --- | --- | --- | --- |
| 26 | 1.4.2 | **项目原型** |  | 1d | 2017-10-19 A | 2017-10-20 A | 25 | 100% |  | 何晓麦; 梁肖剑; 刘子凡; 袁强 | 48h | 48h |
| 27 | 1.4.2.1 | 项目原型 初稿 |  | 1d | 2017-10-19 A | 2017-10-19 A | 25 | 100% |  | 袁强; 梁肖剑; 刘子凡; 何晓麦 | 8h | 8h |
| 28 | 1.4.2.2 | 第一次审核 | milestone | 0d | 2017-10-19 A | 2017-10-19 A | 27 | 100% |  | 何晓麦 |  |  |
| 29 | 1.4.2.3 | 项目原型 迭代 |  | 1d | 2017-10-19 A | 2017-10-19 A | 28 | 100% |  | 袁强 | 8h | 8h |
| 30 | 1.4.2.4 | 项目原型 审核 | milestone | 0d | 2017-10-20 A | 2017-10-20 A | 29 | 100% |  | 何晓麦 |  |  |
| 31 | 1.4.3 | **系统概要设计** |  | 2.5d | 2017-10-20 A | 2017-10-27 A | 26 | 100% |  | 何晓麦; 梁肖剑; 刘子凡; 袁强 | 232h | 232h |
| 32 | 1.4.3.1 | 系统结构讨论 |  | 0.5d | 2017-10-20 A | 2017-10-20 A | 30 | 100% |  | 何晓麦; 梁肖剑; 刘子凡; 袁强 | 16h | 16h |
| 33 | 1.4.3.2 | **系统结构设计** |  | 1d | 2017-10-20 A | 2017-10-20 A |  | 100% |  | 梁肖剑; 刘子凡; 袁强 | 36h | 36h |
| 34 | 1.4.3.2.1 | 系统逻辑架构 |  | 0.5d | 2017-10-20 A | 2017-10-20 A | 32 | 100% | finish no earlier than 2017-10-20 | 梁肖剑 | 4h | 4h |
| 35 | 1.4.3.2.2 | 系统物理架构 |  | 0.5d | 2017-10-20 A | 2017-10-20 A | 32 | 100% | finish no earlier than 2017-10-20 | 刘子凡 | 4h | 4h |
| 36 | 1.4.3.2.3 | 系统功能结构 |  | 0.5d | 2017-10-20 A | 2017-10-20 A | 32 | 100% | finish no earlier than 2017-10-20 | 袁强 | 4h | 4h |
| 37 | 1.4.3.3 | **系统接口设计** |  | 0d | 2017-10-24 A | 2017-10-24 A | 36 | 100% |  | 梁肖剑; 刘子凡; 袁强 |  |  |
| 38 | 1.4.3.3.1 | 系统与用户接口 | milestone | 0d | 2017-10-24 A | 2017-10-24 A | 36 | 100% |  | 梁肖剑; 刘子凡; 袁强 |  |  |
| 39 | 1.4.3.3.2 | 系统内部接口 | milestone | 0d | 2017-10-24 A | 2017-10-24 A | 36 | 100% |  | 梁肖剑; 刘子凡; 袁强 |  |  |
| 40 | 1.4.3.4 | 系统约束和假定、非功能性设计 |  | 0.5d | 2017-10-27 A | 2017-10-27 A | 37 | 100% |  | 何晓麦 | 4h | 4h |
| 41 | 1.4.3.5 | 系统概要设计审核 | milestone | 0d | 2017-10-25 A | 2017-10-25 A | 40 | 100% |  | 何晓麦 |  |  |
| 42 | 1.4.4 | **系统数据模型** |  | 2d | 2017-10-26 A | 2017-10-30 A | 31 | 100% |  |  | 96h | 96h |
| 43 | 1.4.4.1 | 系统数据模型讨论 |  | 1d | 2017-10-26 A | 2017-10-26 A | 41 | 100% |  | 何晓麦; 梁肖剑; 刘子凡; 袁强 | 32h | 32h |
| 44 | 1.4.4.2 | E-R模型 讨论与建模 |  | 1d | 2017-10-26 A | 2017-10-26 A | 41 | 100% |  | 梁肖剑; 刘子凡; 袁强 | 24h | 24h |
| 45 | 1.4.4.3 | 系统物理数据模型 |  | 1d | 2017-10-27 A | 2017-10-27 A | 44 | 100% |  | 何晓麦 | 8h | 8h |
| 46 | 1.4.4.4 | 系统数据字典 |  | 1d | 2017-10-27 A | 2017-10-27 A | 44 | 100% |  | 何晓麦 | 8h | 8h |
| 47 | 1.4.4.5 | 系统数据模型 迭代 |  | 1d | 2017-10-27 A | 2017-10-27 A | 44 | 100% |  | 何晓麦; 袁强 | 16h | 16h |
| 48 | 1.4.4.6 | 系统数据模型 审核 |  | 1d | 2017-10-30 A | 2017-10-30 A | 47 | 100% |  | 何晓麦 | 8h | 8h |
| 49 | 1.4.5 | **系统详细设计** |  | 4d | 2017-11-02 A | 2017-11-10 A | 48 | 100% |  |  |  |  |
| 50 | 1.4.5.1 | 用例顺序图 |  | 2d | 2017-11-02 A | 2017-11-03 A | 48 | 100% |  |  |  |  |
| 51 | 1.4.5.2 | 类图 |  | 1d | 2017-11-09 A | 2017-11-09 A | 50 | 100% |  |  |  |  |
| 52 | 1.4.5.3 | 系统接口设计 |  | 1d | 2017-11-10 A | 2017-11-10 A | 51 | 100% |  |  |  |  |

Notes:
- 26: 项目原型完成
- 42: 系统数据模型完成

| ID | WBS | Task | Type | Duration | Start | Finish | Predecessors | Complete | Remaining | Total slack | Constraint | Resources | Work |
| --- | --- | --- | --- | --- | --- | --- | --- | --- | --- | --- | --- | --- | --- |
| 53 | 1.4.6 | **系统开发** |  | 27d | 2017-10-19 A | 2018-01-05 |  | 25% | 20.25d | 4d |  |  |  |
| 54 | 1.4.6.1 | 数据库开发 |  | 7d | 2017-10-19 A | 2017-11-09 A |  | 100% |  |  |  |  |  |
| 55 | 1.4.6.2 | 前端开发 |  | 10d | 2017-11-10 A | 2017-12-14 | 54 | 11% | 8.88d | 14d |  |  |  |
| 56 | 1.4.6.3 | 后端开发 |  | 20d | 2017-11-10 A | 2018-01-05 | 54 | 6% | 18.88d | 0d |  |  |  |
| 57 | 1.4.7 | 系统测试及报告 |  | 3d | 2018-01-08 | 2018-01-10 | 56 |  |  | 1d |  |  |  |
| 58 | 1.5 | **监控** |  | 22d | 2017-09-23 | 2017-12-09 |  |  |  | 0d |  | 何晓麦; 梁肖剑; 刘子凡; 袁强 | 704h |
| 59 | 1.5.1 | 项目开题审核 |  | 1d | 2017-10-06 | 2017-10-06 | 10 |  |  | 33d |  |  |  |
| 60 | 1.5.2 | 项目概要设计审核 |  | 1d | 2017-10-27 | 2017-11-02 | 31 |  |  | 26.5d |  |  |  |
| 61 | 1.5.3 | **项目周报** |  | 22d | 2017-09-23 | 2017-12-09 |  |  |  | 0d |  |  |  |
| 62 | 1.5.3.1 | 项目周报 1 | milestone, manual | 0d | 2017-09-23 | 2017-09-23 |  |  |  |  | start no earlier than 2017-09-23 |  |  |
| 63 | 1.5.3.2 | 项目周报 2 | milestone, manual | 0d | 2017-09-30 | 2017-09-30 |  |  |  |  | start no earlier than 2017-09-30 |  |  |
| 64 | 1.5.3.3 | 项目周报 3 | milestone, manual | 0d | 2017-10-07 | 2017-10-07 |  |  |  |  | start no earlier than 2017-10-07 |  |  |
| 65 | 1.5.3.4 | 项目周报 4 | milestone, manual | 0d | 2017-10-14 | 2017-10-14 |  |  |  |  | start no earlier than 2017-10-14 |  |  |
| 66 | 1.5.3.5 | 项目周报 5 | milestone, manual | 0d | 2017-10-21 | 2017-10-21 |  |  |  |  | start no earlier than 2017-10-21 |  |  |
| 67 | 1.5.3.6 | 项目周报 6 | milestone, manual | 0d | 2017-10-28 | 2017-10-28 |  |  |  |  | start no earlier than 2017-10-28 |  |  |
| 68 | 1.5.3.7 | 项目周报 7 | milestone, manual | 0d | 2017-11-04 | 2017-11-04 |  |  |  |  | start no earlier than 2017-11-04 |  |  |
| 69 | 1.5.3.8 | 项目周报 8 | milestone, manual | 0d | 2017-11-11 | 2017-11-11 |  |  |  |  | start no earlier than 2017-11-11 |  |  |
| 70 | 1.5.3.9 | 项目周报 9 | milestone, manual | 0d | 2017-11-18 | 2017-11-18 |  |  |  |  | start no earlier than 2017-11-18 |  |  |
| 71 | 1.5.3.10 | 项目周报 10 | milestone, manual | 0d | 2017-11-25 | 2017-11-25 |  |  |  |  | start no earlier than 2017-11-25 |  |  |
| 72 | 1.5.3.11 | 项目周报 11 | milestone, manual | 0d | 2017-12-02 | 2017-12-02 |  |  |  |  | start no earlier than 2017-12-02 |  |  |
| 73 | 1.5.3.12 | 项目周报 12 | milestone, manual | 0d | 2017-12-09 | 2017-12-09 |  |  |  |  | start no earlier than 2017-12-09 |  |  |
| 74 | 1.6 | **收尾** |  | 4d | 2018-01-08 | 2018-01-11 | 56 |  |  | 0d |  | 何晓麦; 梁肖剑; 刘子凡; 袁强 | 128h |
| 75 | 1.6.1 | 用户手册 |  | 1d | 2018-01-08 | 2018-01-08 | 56 |  |  | 0d |  |  |  |
| 76 | 1.6.2 | 云服务器部署 |  | 1d | 2018-01-09 | 2018-01-09 | 75 |  |  | 0d |  |  |  |
| 77 | 1.6.3 | 项目结题报告 |  | 1d | 2018-01-10 | 2018-01-10 | 76 |  |  | 0d |  |  |  |
| 78 | 1.6.4 | 项目总结 |  | 1d | 2018-01-11 | 2018-01-11 | 77 |  |  | 0d |  |  |  |
| 79 | 1.6.5 | 项目交付 |  | 1d | 2018-01-11 | 2018-01-11 | 77 |  |  | 0d |  |  |  |
| 80 | 1.6.6 | 项目完结 | milestone | 0d | 2018-01-11 | 2018-01-11 | 78 |  |  | 0d |  |  |  |

Notes:
- 55: 在其旁边带有图钉的任务为手动计划任务。当您不想让 Project 移动任务时请使用它们。如果您尚未获得所有信息，您也可以在工期、开始和完成字段输入任意文本或将其保留为空。
